# Northfield Pipeline — Phase 2

Schedule from Primavera P6, 2026-03-09 to 2026-10-07, data date 2026-06-01, costs in CP1252, A marks actual dates.
Must finish by 2027-03-01

## Calendars

- Standard 5 day / 8 hour: Mon-Fri 08:00-17:00; Sat-Sun off.
- Construction 6 day / 10 hour: Mon-Sat 08:00-17:00; Sun off.

## Schedule

| ID | WBS | Activity | Type | Duration | Start | Finish | Predecessors | Complete | Remaining | Total float | Free float | Calendar | Cost |
| --- | --- | --- | --- | --- | --- | --- | --- | --- | --- | --- | --- | --- | --- |
|  | W-COM | **Commissioning** |  |  | 2026-09-11 | 2026-10-07 |  |  |  |  |  |  |  |
| COM-4010 |  | Pre-commissioning |  | 6d | 2026-09-11 | 2026-09-21 | CON-3070 |  |  | 0d |  |  | 75,000 |
| COM-4020 |  | Dry commissioning |  | 6d | 2026-09-21 | 2026-09-29 | COM-4010 |  |  | 0d |  |  | 75,000 |
| COM-4030 |  | Wet commissioning |  | 6d | 2026-09-29 | 2026-10-07 | COM-4020 |  |  | 0d |  |  | 75,000 |
| MS-9000 |  | Mechanical completion | milestone | 0d | 2026-10-07 | 2026-10-07 | COM-4030 |  |  | 0d |  |  |  |
|  | W-CON | **Construction** |  |  | 2026-06-01 | 2026-09-11 |  |  |  |  |  |  |  |
| CON-3900 |  | Route survey |  | 5d | 2026-06-01 | 2026-06-08 | PRO-2030 SS+2d |  |  | 12d | 0d |  | 62,500 |
| CON-3010 |  | Site establishment |  | 12d | 2026-06-05 | 2026-06-19 | PRO-2030 |  |  | 0d |  | Construction 6 day / 10 hour | 150,000 |
| CON-3020 |  | Earthworks and trenching |  | 12d | 2026-06-19 | 2026-07-03 | CON-3010, CON-3900 |  |  | 0d |  | Construction 6 day / 10 hour | 150,000 |
| CON-3030 |  | Pipe stringing |  | 12d | 2026-07-03 | 2026-07-17 | CON-3020 |  |  | 0d |  | Construction 6 day / 10 hour | 150,000 |
| CON-3040 |  | Welding and NDT |  | 12d | 2026-07-17 | 2026-07-31 | CON-3030 |  |  | 0d |  | Construction 6 day / 10 hour | 150,000 |
| CON-3050 |  | Lowering-in and backfill |  | 12d | 2026-07-31 | 2026-08-14 | CON-3040 |  |  | 0d |  | Construction 6 day / 10 hour | 150,000 |
| CON-3060 |  | Tie-ins |  | 12d | 2026-08-14 | 2026-08-28 | CON-3050 |  |  | 0d |  | Construction 6 day / 10 hour | 150,000 |
| CON-3070 |  | Hydrotest |  | 12d | 2026-08-28 | 2026-09-11 | CON-3060 |  |  | 0d |  | Construction 6 day / 10 hour | 150,000 |
|  | W-ENG | **Engineering** |  |  | 2026-03-09 | 2026-05-04 |  |  |  |  |  |  |  |
| ENG-1010 |  | Basis of design |  | 10d | 2026-03-09 A | 2026-03-23 A | MS-1000 | 100% |  |  |  |  | 125,000 |
| ENG-1900 |  | Permitting and approvals |  | 15d | 2026-03-09 A | 2026-03-30 A | MS-1000 | 100% |  |  |  |  | 187,500 |
| MS-1000 |  | Notice to proceed | milestone | 0d | 2026-03-09 A | 2026-03-09 A |  | 100% |  |  |  |  |  |
| ENG-1020 |  | Process flow diagrams |  | 10d | 2026-03-23 A | 2026-04-06 A | ENG-1010 | 100% |  |  |  |  | 125,000 |
| ENG-1030 |  | P&ID development |  | 10d | 2026-04-06 A | 2026-04-20 A | ENG-1020 | 100% |  |  |  |  | 125,000 |
| ENG-1040 |  | Detailed design |  | 10d | 2026-04-20 A | 2026-05-04 A | ENG-1030 | 100% |  |  |  |  | 125,000 |
|  | W-PRO | **Procurement** |  |  | 2026-05-04 | 2026-06-05 |  |  |  |  |  |  |  |
| PRO-2010 |  | Long-lead enquiry |  | 8d | 2026-05-04 A | 2026-05-14 A | ENG-1040, ENG-1900 | 100% |  |  |  |  | 100,000 |
| PRO-2020 |  | Vendor evaluation |  | 8d | 2026-05-14 A | 2026-05-26 A | PRO-2010 | 100% |  |  |  |  | 100,000 |
| PRO-2030 |  | Purchase orders |  | 8d | 2026-05-26 A | 2026-06-05 | PRO-2020 | 50% | 4d | 0d |  |  | 100,000 |
